# 易民生（一期）项目工程表

Schedule from MS Project, 2016-04-26 to 2016-06-30, A marks actual dates.
V5 co.ltd

## Calendars

- 标准: Mon-Fri 08:00-12:00, 13:00-17:00; Sat-Sun off. Exceptions (off unless hours are given): 2016-04-29 to 2016-06-30 08:00-12:00, 13:00-17:00 (星期六加班, recurring).

## Resources

| Resource |
| --- |
| 刘志强 |
| 黄勇 |
| 张玉双 |
| 夏纬一 |
| 孙扬 |
| 董培培 |
| 张晓 |
| 杨明 |
| 杨海明 |
| 刘文彬 |
| 姚家声 |
| 石佳霖 |
| 周朝锋 |
| 宋智 |
| 刘伟民 |
| 乔文全 |
| 王顺平 |
| 刘东兴 |
| 云悦 |
| 石凯 |

## Schedule

| ID | WBS | Task | Duration | Start | Finish | Predecessors | Complete | Remaining | Total slack | Free slack | Constraint | Resources | Work |
| --- | --- | --- | --- | --- | --- | --- | --- | --- | --- | --- | --- | --- | --- |
| 1 | 1 | 前期准备 | 7d | 2016-04-26 09:00 | 2016-05-04 09:00 |  |  |  | 1d | 0d | start no earlier than 2016-04-26 09:00 | 黄勇; 刘志强 | 112h |
| 2 | 2 | 项目启动会 | 1d | 2016-05-04 09:00 | 2016-05-05 09:00 | 1 |  |  | 1d |  | start no earlier than 2016-04-29 08:00 |  |  |
| 3 | 3 | **设计** | 11d? | 2016-05-06 09:00 A | 2016-05-19 09:00 | 2 | 28% | 7.94d? | 13.62d | 1d |  |  | 112.8h |
| 4 | 3.1 | **需求分析** | 5.88d? | 2016-05-06 09:00 A | 2016-05-12 17:00 |  | 34% | 3.87d? | 13.74d | 0.12d |  |  | 112.8h |
| 5 | 3.1.1 | 总体需求讨论 | 1.88d | 2016-05-06 09:00 A | 2016-05-07 21:00 A |  | 100% |  |  |  | start no earlier than 2016-05-06 09:00 |  |  |
| 6 | 3.1.2 | **编写需求规格说明书** | 3.88d? | 2016-05-09 09:00 A | 2016-05-12 17:00 | 5 | 28% | 2.79d? | 13.74d |  |  |  | 112.8h |
| 7 | 3.1.2.1 | **易民生App需求规格说明书** | 3d | 2016-05-09 09:00 A | 2016-05-12 09:00 |  | 63% | 1.12d | 14.62d |  |  |  | 8h |
| 8 | 3.1.2.1.1 | 主要界面功能需求 | 2d | 2016-05-09 09:00 A | 2016-05-11 09:00 |  | 94% | 0.12d | 15.62d |  | start no earlier than 2016-05-09 09:00 |  |  |
| 9 | 3.1.2.1.2 | **其它** | 0.5d | 2016-05-11 09:00 | 2016-05-11 14:00 |  |  |  | 14.62d |  |  |  | 4h |
| 10 | 3.1.2.1.2.1 | 登录、注册、忘记密码 | 0.5d | 2016-05-11 09:00 | 2016-05-11 14:00 |  |  |  | 14.62d | 0d | start no earlier than 2016-05-11 09:00 | 张晓 | 4h |
| 11 | 3.1.2.1.3 | 医院专属移动门户App | 0.5d | 2016-05-11 14:00 | 2016-05-12 09:00 | 10 |  |  | 14.62d |  | start no earlier than 2016-05-11 08:00 | 张晓 | 4h |
| 12 | 3.1.2.2 | **运营管理综合部分需求规格说明书** | 1.5d | 2016-05-11 08:00 | 2016-05-12 12:00 |  |  |  | 14.14d |  |  |  | 23.2h |
| 13 | 3.1.2.2.1 | 首页dashboard | 0.5d | 2016-05-11 08:00 | 2016-05-11 12:00 |  |  |  | 14.14d | 0d | start no earlier than 2016-05-11 08:00 | 杨海明 | 4h |
| 14 | 3.1.2.2.2 | 易健康专有App管理 | 0.5d | 2016-05-11 08:00 | 2016-05-11 12:00 |  |  |  | 14.24d | 0d | start no earlier than 2016-05-11 08:00 | 乔文全 | 4h |
| 15 | 3.1.2.2.3 | 用户管理 | 0.5d | 2016-05-11 13:00 | 2016-05-11 17:00 | 14 |  |  | 14.24d | 0d | start no earlier than 2016-05-11 08:00 | 乔文全 | 4h |
| 16 | 3.1.2.2.4 | 运营统计 | 0.5d | 2016-05-12 08:00 | 2016-05-12 12:00 | 15 |  |  | 14.24d |  | start no earlier than 2016-05-11 08:00 | 乔文全 | 4h |
| 17 | 3.1.2.2.5 | 消息公告管理 | 0.3d | 2016-05-11 08:00 | 2016-05-11 10:24 |  |  |  | 14.54d | 0d | start no earlier than 2016-05-11 08:00 | 董培培 | 2.4h |
| 18 | 3.1.2.2.6 | **公用** | 0.6d | 2016-05-11 10:24 | 2016-05-11 16:12 |  |  |  | 14.54d |  |  |  | 4.8h |
| 19 | 3.1.2.2.6.1 | 消息公告 | 0.3d | 2016-05-11 10:24 | 2016-05-11 13:48 | 17 |  |  | 14.54d | 0d | start no earlier than 2016-05-11 08:00 | 董培培 | 2.4h |
| 20 | 3.1.2.2.6.2 | 修改登录密码 | 0.3d | 2016-05-11 13:48 | 2016-05-11 16:12 | 19 |  |  | 14.54d | 0d | start no earlier than 2016-05-11 08:00 | 董培培 | 2.4h |
| 21 | 3.1.2.3 | **易薪宝需求规格说明书** | 3.08d | 2016-05-09 09:00 A | 2016-05-12 09:36 |  | 78% | 0.67d | 14.54d |  |  |  | 6.4h |
| 22 | 3.1.2.3.1 | **运营端** | 2.58d | 2016-05-09 09:00 A | 2016-05-11 14:36 |  | 85% | 0.37d | 15.04d |  |  |  | 1.6h |
| 23 | 3.1.2.3.1.1 | 机构管理、业务监控、业务统计 | 2d | 2016-05-09 09:00 A | 2016-05-11 09:00 |  | 94% | 0.12d | 15.62d |  | start no earlier than 2016-05-09 09:00 |  |  |
| 24 | 3.1.2.3.1.2 | 首页dashboard | 0.2d | 2016-05-11 13:00 | 2016-05-11 14:36 | 13 |  |  | 14.14d | 0d | start no earlier than 2016-05-11 08:00 | 杨海明 | 1.6h |

| ID | WBS | Task | Duration | Start | Finish | Predecessors | Complete | Remaining | Total slack | Free slack | Constraint | Resources | Work |
| --- | --- | --- | --- | --- | --- | --- | --- | --- | --- | --- | --- | --- | --- |
| 25 | 3.1.2.3.2 | **机构端** | 3.08d | 2016-05-09 09:00 A | 2016-05-12 09:36 |  | 72% | 0.85d | 14.54d |  |  |  | 4.8h |
| 26 | 3.1.2.3.2.1 | 人员、代发、工资、数据统计 | 2d | 2016-05-09 09:00 A | 2016-05-11 09:00 |  | 94% | 0.12d | 15.62d |  | start no earlier than 2016-05-09 09:00 |  |  |
| 27 | 3.1.2.3.2.2 | 首页dashboard | 0.3d | 2016-05-11 14:36 | 2016-05-11 17:00 | 24 |  |  | 14.14d | 0d | start no earlier than 2016-05-11 08:00 | 杨海明 | 2.4h |
| 28 | 3.1.2.3.2.3 | 变更手机号 | 0.3d | 2016-05-11 16:12 | 2016-05-12 09:36 | 20 |  |  | 14.54d |  | start no earlier than 2016-05-11 08:00 | 董培培 | 2.4h |
| 29 | 3.1.2.4 | **易健康需求规格说明书** | 2d? | 2016-05-11 08:00 | 2016-05-12 17:00 |  |  |  | 13.74d |  |  |  | 75.2h |
| 30 | 3.1.2.4.1 | **运营端** | 2d | 2016-05-11 08:00 | 2016-05-12 17:00 |  |  |  | 13.74d |  |  |  | 28.8h |
| 31 | 3.1.2.4.1.1 | 首页dashboard | 0.3d | 2016-05-12 08:00 | 2016-05-12 10:24 | 27 |  |  | 14.14d | 0d | start no earlier than 2016-05-11 08:00 | 杨海明 | 2.4h |
| 32 | 3.1.2.4.1.2 | 医院管理 | 0.3d | 2016-05-11 08:00 | 2016-05-11 10:24 |  |  |  | 14.45d | 0d | start no earlier than 2016-05-11 08:00 | 刘东兴 | 2.4h |
| 33 | 3.1.2.4.1.3 | 患者查询 | 0.5d | 2016-05-11 10:24 | 2016-05-11 15:24 | 32 |  |  | 14.45d | 0d | start no earlier than 2016-05-11 08:00 | 刘东兴 | 4h |
| 34 | 3.1.2.4.1.4 | 业务跟踪 | 0.5d | 2016-05-11 15:24 | 2016-05-12 10:24 | 33 |  |  | 14.45d |  | start no earlier than 2016-05-11 08:00 | 刘东兴 | 4h |
| 35 | 3.1.2.4.1.5 | **结算管理** | 1d | 2016-05-11 08:00 | 2016-05-11 17:00 |  |  |  | 13.74d |  |  |  | 8h |
| 36 | 3.1.2.4.1.5.1 | 账单查询 | 0.5d | 2016-05-11 08:00 | 2016-05-11 12:00 |  |  |  | 13.74d | 0d | start no earlier than 2016-05-11 08:00 | 石凯 | 4h |
| 37 | 3.1.2.4.1.5.2 | 对账结算 | 0.5d | 2016-05-11 13:00 | 2016-05-11 17:00 | 36 |  |  | 13.74d | 0d | start no earlier than 2016-05-11 08:00 | 石凯 | 4h |
| 38 | 3.1.2.4.1.6 | **统计** | 1d | 2016-05-12 08:00 | 2016-05-12 17:00 |  |  |  | 13.74d |  |  |  | 8h |
| 39 | 3.1.2.4.1.6.1 | 结算统计 | 0.5d | 2016-05-12 08:00 | 2016-05-12 12:00 | 37 |  |  | 13.74d | 0d | start no earlier than 2016-05-11 08:00 | 石凯 | 4h |
| 40 | 3.1.2.4.1.6.2 | 运营统计 | 0.5d | 2016-05-12 13:00 | 2016-05-12 17:00 | 39 |  |  | 13.74d |  | start no earlier than 2016-05-11 08:00 | 石凯 | 4h |
| 41 | 3.1.2.4.2 | **医院端** | 2d? | 2016-05-11 08:00 | 2016-05-12 17:00 |  |  |  | 13.74d |  |  |  | 46.4h |
| 42 | 3.1.2.4.2.1 | 首页dashboard | 0.3d | 2016-05-12 10:24 | 2016-05-12 13:48 | 31 |  |  | 14.14d |  | start no earlier than 2016-05-11 08:00 | 杨海明 | 2.4h |
| 43 | 3.1.2.4.2.2 | 医院信息维护 | 2d | 2016-05-11 08:00 | 2016-05-12 17:00 |  |  |  | 13.74d |  | start no earlier than 2016-05-11 08:00 | 宋智 | 16h |
| 44 | 3.1.2.4.2.3 | 移动门户维护 | 0.5d | 2016-05-11 08:00 | 2016-05-11 12:00 |  |  |  | 14.24d | 0d | start no earlier than 2016-05-11 08:00 | 王顺平 | 4h |
| 45 | 3.1.2.4.2.4 | 患者查询 | 0.5d | 2016-05-11 13:00 | 2016-05-11 17:00 | 44 |  |  | 14.24d | 0d | start no earlier than 2016-05-11 08:00 | 王顺平 | 4h |
| 46 | 3.1.2.4.2.5 | 业务跟踪 | 0.5d | 2016-05-12 08:00 | 2016-05-12 12:00 | 45 |  |  | 14.24d |  | start no earlier than 2016-05-11 08:00 | 王顺平 | 4h |
| 47 | 3.1.2.4.2.6 | 结算管理 | 1d | 2016-05-11 08:00 | 2016-05-11 17:00 |  |  |  | 13.74d | 0d | start no earlier than 2016-05-11 08:00 | 云悦 | 8h |
| 48 | 3.1.2.4.2.7 | 统计报表 | 1d? | 2016-05-12 08:00 | 2016-05-12 17:00 | 47 |  |  | 13.74d |  | start no earlier than 2016-05-11 08:00 | 云悦 | 8h |
| 49 | 3.2 | 总体设计 | 2d | 2016-05-13 09:00 | 2016-05-16 09:00 | 4 |  |  | 13.62d | 0d | start no earlier than 2016-05-13 09:00 |  |  |
| 50 | 3.3 | 详细设计 | 3d | 2016-05-16 09:00 | 2016-05-19 09:00 | 49 |  |  | 13.62d |  |  |  |  |

| ID | WBS | Task | Type | Duration | Start | Finish | Predecessors | Complete | Remaining | Total slack | Free slack | Constraint | Resources | Work | Actual work |
| --- | --- | --- | --- | --- | --- | --- | --- | --- | --- | --- | --- | --- | --- | --- | --- |
| 51 | 4 | **环境准备** |  | 5d | 2016-05-06 09:00 A | 2016-05-12 09:00 A |  | 100% |  |  |  |  |  | 80h | 80h |
| 52 | 4.1 | 开发、测试服务器基础环境准备 |  | 2d | 2016-05-06 09:00 A | 2016-05-09 09:00 A |  | 100% |  |  |  | start no earlier than 2016-05-06 09:00 | 杨明; 夏纬一 | 32h | 32h |
| 53 | 4.2 | 开发相关内部资源库部署（Maven/NPM/Bower） |  | 3d | 2016-05-09 09:00 A | 2016-05-12 09:00 A | 52 | 100% |  |  |  | start no earlier than 2016-04-29 08:00 | 杨明; 夏纬一 | 48h | 48h |
| 54 | 5 | **技术框架选型及研究** |  | 26d | 2016-05-12 09:00 | 2016-06-11 09:00 | 51 |  |  | 16d |  |  |  | 208h |  |
| 55 | 5.1 | **企业服务总线** |  | 6d | 2016-05-12 09:00 | 2016-05-19 09:00 |  |  |  | 16d | 0d |  |  | 48h |  |
| 56 | 5.1.1 | 选型及测试 |  | 3d | 2016-05-12 09:00 | 2016-05-16 09:00 |  |  |  | 16d | 0d | start no earlier than 2016-04-29 08:00 | 杨明 | 24h |  |
| 57 | 5.1.2 | 平台集成研究 |  | 3d | 2016-05-16 09:00 | 2016-05-19 09:00 | 56 |  |  | 16d |  | start no earlier than 2016-04-29 08:00 | 杨明 | 24h |  |
| 58 | 5.2 | **外联接口平台** |  | 6d | 2016-05-19 09:00 | 2016-05-26 09:00 | 55 |  |  | 16d | 0d |  |  | 48h |  |
| 59 | 5.2.1 | 选型及测试 |  | 3d | 2016-05-19 09:00 | 2016-05-23 09:00 |  |  |  | 16d | 0d | start no earlier than 2016-04-29 08:00 | 杨明 | 24h |  |
| 60 | 5.2.2 | 平台集成研究 |  | 3d | 2016-05-23 09:00 | 2016-05-26 09:00 | 59 |  |  | 16d |  | start no earlier than 2016-04-29 08:00 | 杨明 | 24h |  |
| 61 | 5.3 | **技术平台部署研究** |  | 14d | 2016-05-26 09:00 | 2016-06-11 09:00 | 58 |  |  | 16d |  |  |  | 112h |  |
| 62 | 5.3.1 | Nginx集群研究 |  | 3d | 2016-05-26 09:00 | 2016-05-30 09:00 |  |  |  | 16d | 0d | start no earlier than 2016-04-29 08:00 | 杨明 | 24h |  |
| 63 | 5.3.2 | SpringBoot集群研究 |  | 5d | 2016-05-30 09:00 | 2016-06-04 09:00 | 62 |  |  | 16d | 0d | start no earlier than 2016-04-29 08:00 | 杨明 | 40h |  |
| 64 | 5.3.3 | MySQL集群研究 |  | 4d | 2016-06-04 09:00 | 2016-06-09 09:00 | 63 |  |  | 16d | 0d | start no earlier than 2016-04-29 08:00 | 杨明 | 32h |  |
| 65 | 5.3.4 | Redis应用研究 |  | 2d | 2016-06-09 09:00 | 2016-06-11 09:00 | 64 |  |  | 16d |  | start no earlier than 2016-04-29 08:00 | 杨明 | 16h |  |
| 66 | 6 | **开发** |  | 22.38d? | 2016-05-20 09:00 | 2016-06-15 13:02 | 3 |  |  | 12.62d |  |  |  | 80h |  |
| 67 | 6.1 | **开发人员培训** |  | 1.5d | 2016-05-20 09:00 | 2016-05-21 14:00 |  |  |  | 12.62d | 0d |  | 乔文全; 王顺平; 刘东兴; 云悦; 石凯; 黄勇 | 80h |  |
| 68 | 6.1.1 | 总体技术架构培训 |  | 0.5d | 2016-05-20 09:00 | 2016-05-20 14:00 |  |  |  | 12.62d | 0d | start no earlier than 2016-05-20 09:00 |  |  |  |
| 69 | 6.1.2 | React Native培训 |  | 0.5d | 2016-05-20 14:00 | 2016-05-21 09:00 | 68 |  |  | 12.62d | 0d | start no earlier than 2016-05-09 09:00 | 黄勇 | 4h |  |
| 70 | 6.1.3 | Web开发环境培训 |  | 0.5d | 2016-05-21 09:00 | 2016-05-21 14:00 | 69 |  |  | 12.62d |  | start no earlier than 2016-04-29 08:00 | 夏纬一 | 4h |  |
| 71 | 6.2 | 编码 |  | 20.88d? | 2016-05-21 14:00 | 2016-06-15 13:02 | 67 |  |  | 12.62d |  | start no earlier than 2016-05-21 09:00 |  |  |  |
| 72 | 7 | **测试** |  | 42d | 2016-05-09 09:00 A | 2016-06-27 09:00 |  | 4% | 40.12d | 0d |  |  |  | 904h | 15.04h |
| 73 | 7.1 | 测试方案 |  | 14d | 2016-05-09 09:00 A | 2016-05-25 09:00 |  | 13% | 12.12d | 0d |  | start no earlier than 2016-05-09 09:00 | 周朝锋 | 112h | 15.04h |
| 74 | 7.2 | 单元测试 |  | 9d | 2016-05-25 09:00 | 2016-06-04 09:00 | 73 |  |  | 0d |  | start no earlier than 2016-05-23 09:00 | 宋智; 刘伟民; 周朝锋 | 216h |  |
| 75 | 7.3 | 集成测试 |  | 14d | 2016-06-04 09:00 | 2016-06-21 09:00 | 74 |  |  | 0d |  | start no earlier than 2016-04-29 08:00 | 宋智; 刘伟民; 周朝锋 | 336h |  |
| 76 | 7.4 | 性能测试 |  | 5d | 2016-06-21 09:00 | 2016-06-27 09:00 | 75 |  |  | 0d |  | start no earlier than 2016-04-29 08:00 | 宋智; 刘伟民; 周朝锋; 夏纬一; 杨明; 张玉双 | 240h |  |
| 77 | 8 | 生产环境部署 |  | 3d | 2016-06-27 09:00 | 2016-06-30 09:00 | 72 |  |  | 0d |  | start no earlier than 2016-04-29 09:00 |  |  |  |
| 78 | 9 | 模拟上线 | milestone | 0d | 2016-06-30 09:00 | 2016-06-30 09:00 | 77 |  |  | 0d |  | start no earlier than 2016-04-29 08:00 |  |  |  |
