# 自助机产品研发项目工程表

Schedule from MS Project, 2016-12-16 to 2017-05-22, costs in ¥, A marks actual dates.

## Calendars

- 标准: Mon-Fri 08:00-12:00, 13:00-17:00; Sat-Sun off. Exceptions (off unless hours are given): 2016-12-16 to 2017-04-30 08:00-12:00, 13:00-17:00 (周六加班, recurring), 2016-12-31 to 2017-01-02 (元旦), 2017-01-22 08:00-12:00, 13:00-17:00 (春节倒班), 2017-01-27 to 2017-02-02 (春节), 2017-03-12 08:00-12:00, 13:00-17:00, 2017-03-19 08:00-12:00, 13:00-17:00, 2017-04-02 to 2017-04-04 (清明).

## Resources

| Resource | Rate |
| --- | --- |
| 黄勇 | 562.5 |
| 夏纬一 | 312.5 |
| 樊扬 | 250 |
| 张玉双 |  |
| 刘志强 |  |

## Schedule

| ID | WBS | Task | Type | Duration | Start | Finish | Predecessors | Complete | Remaining | Total slack | Free slack | Constraint | Resources | Work | Actual work | Cost | Actual cost |
| --- | --- | --- | --- | --- | --- | --- | --- | --- | --- | --- | --- | --- | --- | --- | --- | --- | --- |
| 1 | 1 | **自助机研发** |  | 125d? | 2016-12-16 A | 2017-05-22 |  | 40% | 75.11d? | 0d |  |  |  | 1698h | 742h | 613,125 | 278,875 |
| 2 | 1.1 | **SSM研发第一阶段** |  | 41d? | 2016-12-16 A | 2017-02-09 |  | 95% | 2.23d? | -3d | 0d |  |  | 736h | 696h | 294,500 | 277,000 |
| 3 | 1.1.1 | **设计及基础环境准备** |  | 13d? | 2016-12-16 A | 2016-12-30 A |  | 100% |  |  |  |  |  | 216h | 216h | 89,000 | 89,000 |
| 4 | 1.1.1.1 | 界面原型设计 |  | 13d | 2016-12-16 A | 2016-12-30 A |  | 100% |  |  |  | start no earlier than 2016-12-16 | 黄勇 | 104h | 104h | 58,500 | 58,500 |
| 5 | 1.1.1.2 | 软件基础环境准备 |  | 5d | 2016-12-26 A | 2016-12-30 A |  | 100% |  |  |  | start no earlier than 2016-12-26 | 夏纬一 | 40h | 40h | 12,500 | 12,500 |
| 6 | 1.1.1.3 | 硬件外设基础环境准备 |  | 9d? | 2016-12-19 A | 2016-12-28 A |  | 100% |  |  |  | start no earlier than 2016-12-19 | 樊扬 | 72h | 72h | 18,000 | 18,000 |
| 7 | 1.1.2 | **开发** |  | 30d? | 2016-12-29 A | 2017-02-09 |  | 92% | 2.31d? | -3d | 0d |  |  | 520h | 480h | 205,500 | 188,000 |
| 8 | 1.1.2.1 | **硬件接口封装** |  | 26d? | 2016-12-29 A | 2017-02-04 |  | 92% | 2d? | -2d | 0d |  |  | 208h | 192h | 52,000 | 48,000 |
| 9 | 1.1.2.1.1 | 卷票打印机 |  | 2d | 2016-12-29 A | 2016-12-30 A |  | 100% |  |  |  | start no earlier than 2016-12-29 | 樊扬 | 16h | 16h | 4,000 | 4,000 |
| 10 | 1.1.2.1.2 | 钞箱 |  | 1d | 2017-01-03 A | 2017-01-03 A | 9 | 100% |  |  |  |  | 樊扬 | 8h | 8h | 2,000 | 2,000 |
| 11 | 1.1.2.1.3 | 多合一读卡器 |  | 1d | 2017-01-04 A | 2017-01-04 A | 10 | 100% |  |  |  |  | 樊扬 | 8h | 8h | 2,000 | 2,000 |
| 12 | 1.1.2.1.4 | 银联卡读卡器 |  | 1d | 2017-01-05 A | 2017-01-05 A | 11 | 100% |  |  |  |  | 樊扬 | 8h | 8h | 2,000 | 2,000 |
| 13 | 1.1.2.1.5 | 银联支付密码键盘 |  | 1d? | 2017-01-06 A | 2017-01-06 A | 12 | 100% |  |  |  |  | 樊扬 | 8h | 8h | 2,000 | 2,000 |
| 14 | 1.1.2.1.6 | 发卡装置（证卡打印机） |  | 12d | 2017-01-09 A | 2017-01-21 A | 17 | 100% |  |  |  |  | 樊扬 | 96h | 96h | 24,000 | 24,000 |
| 15 | 1.1.2.1.7 | 医保卡读卡器 | inactive | 1d | 2017-02-04 | 2017-02-04 | 18 |  |  | -14d | 0d |  | 樊扬 | 8h |  | 2,000 |  |
| 16 | 1.1.2.1.8 | 报告打印机 |  | 4d | 2017-01-22 A | 2017-01-25 A | 14 | 100% |  |  |  |  | 樊扬 | 32h | 32h | 8,000 | 8,000 |
| 17 | 1.1.2.1.9 | 身份证读卡器 |  | 1d | 2017-01-07 A | 2017-01-07 A | 13 | 100% |  |  |  |  | 樊扬 | 8h | 8h | 2,000 | 2,000 |
| 18 | 1.1.2.1.10 | 指示灯 |  | 1d | 2017-02-03 | 2017-02-03 | 19 |  |  | -13d | 0d |  | 樊扬 | 8h |  | 2,000 |  |
| 19 | 1.1.2.1.11 | 语音 |  | 1d? | 2017-01-26 A | 2017-01-26 A | 16 | 100% |  |  |  |  | 樊扬 | 8h | 8h | 2,000 | 2,000 |
| 20 | 1.1.2.1.12 | 报警装置 |  | 1d? | 2017-02-04 | 2017-02-04 | 15 |  |  | -13d | 0d |  | 樊扬 | 8h |  | 2,000 |  |
| 21 | 1.1.2.1.13 | 病历封面打印机 | inactive | 1d? | 2017-02-06 | 2017-02-06 | 20 |  |  | -14d | 0d |  | 樊扬 | 8h |  | 2,000 |  |
| 22 | 1.1.2.2 | **自助机功能开发** |  | 25d? | 2017-01-03 A | 2017-02-06 A |  | 100% |  |  |  |  |  | 288h | 288h | 140,000 | 140,000 |
| 23 | 1.1.2.2.1 | 业务基础框架 |  | 11d | 2017-01-03 A | 2017-01-14 A |  | 100% |  |  |  |  | 夏纬一 | 88h | 88h | 27,500 | 27,500 |
| 24 | 1.1.2.2.2 | 办理就诊卡 |  | 2d | 2017-01-03 A | 2017-01-04 A |  | 100% |  |  |  |  | 黄勇 | 16h | 16h | 9,000 | 9,000 |
| 25 | 1.1.2.2.3 | 自助建档 |  | 2d | 2017-01-05 A | 2017-01-06 A | 24 | 100% |  |  |  |  | 黄勇 | 16h | 16h | 9,000 | 9,000 |
| 26 | 1.1.2.2.4 | 预约医生 |  | 1d | 2017-01-09 A | 2017-01-09 A | 27 | 100% |  |  |  |  | 黄勇 | 8h | 8h | 4,500 | 4,500 |
| 27 | 1.1.2.2.5 | 预约签到 |  | 1d? | 2017-01-07 A | 2017-01-07 A | 25 | 100% |  |  |  |  | 黄勇 | 8h | 8h | 4,500 | 4,500 |
| 28 | 1.1.2.2.6 | 预约查询 |  | 1d? | 2017-01-10 A | 2017-01-10 A | 26 | 100% |  |  |  |  | 黄勇 | 8h | 8h | 4,500 | 4,500 |
| 29 | 1.1.2.2.7 | 开通预存 |  | 1d? | 2017-01-11 A | 2017-01-11 A | 28 | 100% |  |  |  |  | 黄勇 | 8h | 8h | 4,500 | 4,500 |
| 30 | 1.1.2.2.8 | 现金预存 |  | 1d | 2017-01-12 A | 2017-01-12 A | 29 | 100% |  |  |  |  | 黄勇 | 8h | 8h | 4,500 | 4,500 |
| 31 | 1.1.2.2.9 | 银行卡预存 |  | 1d | 2017-01-13 A | 2017-01-13 A | 30 | 100% |  |  |  |  | 黄勇 | 8h | 8h | 4,500 | 4,500 |
| 32 | 1.1.2.2.10 | 支付宝/微信预存 |  | 1d | 2017-01-14 A | 2017-01-14 A | 31 | 100% |  |  |  |  | 黄勇 | 8h | 8h | 4,500 | 4,500 |
| 33 | 1.1.2.2.11 | 预存消费记录查询 |  | 1d? | 2017-01-19 A | 2017-01-19 A | 40 | 100% |  |  |  |  | 黄勇 | 8h | 8h | 4,500 | 4,500 |
| 34 | 1.1.2.2.12 | 检查单查询（及打印） |  | 1d | 2017-01-22 A | 2017-01-22 A | 36 | 100% |  |  |  |  | 黄勇 | 8h | 8h | 4,500 | 4,500 |
| 35 | 1.1.2.2.13 | 门诊病历打印 |  | 4d | 2017-01-23 A | 2017-01-26 A | 34 | 100% |  |  |  |  | 黄勇 | 32h | 32h | 18,000 | 18,000 |
| 36 | 1.1.2.2.14 | 缴费 |  | 2d | 2017-01-20 A | 2017-01-21 A | 33 | 100% |  |  |  |  | 黄勇 | 16h | 16h | 9,000 | 9,000 |

| ID | WBS | Task | Type | Duration | Start | Finish | Predecessors | Complete | Remaining | Total slack | Free slack | Constraint | Resources | Work | Actual work | Cost | Actual cost |
| --- | --- | --- | --- | --- | --- | --- | --- | --- | --- | --- | --- | --- | --- | --- | --- | --- | --- |
| 37 | 1.1.2.2.15 | **住院预缴** |  | 3d? | 2017-01-16 A | 2017-01-18 A |  | 100% |  |  |  |  |  | 24h | 24h | 13,500 | 13,500 |
| 38 | 1.1.2.2.15.1 | 就诊卡预存转预缴 |  | 1d? | 2017-01-16 A | 2017-01-16 A | 32 | 100% |  |  |  |  | 黄勇 | 8h | 8h | 4,500 | 4,500 |
| 39 | 1.1.2.2.15.2 | 银行卡预缴 |  | 1d? | 2017-01-17 A | 2017-01-17 A | 38 | 100% |  |  |  |  | 黄勇 | 8h | 8h | 4,500 | 4,500 |
| 40 | 1.1.2.2.15.3 | 支付宝/微信预缴 |  | 1d? | 2017-01-18 A | 2017-01-18 A | 39 | 100% |  |  |  |  | 黄勇 | 8h | 8h | 4,500 | 4,500 |
| 41 | 1.1.2.2.16 | 住院日清单 |  | 1d | 2017-02-03 A | 2017-02-03 A | 35 | 100% |  |  |  |  | 黄勇 | 8h | 8h | 4,500 | 4,500 |
| 42 | 1.1.2.2.17 | 住院费用查询 |  | 1d | 2017-02-04 A | 2017-02-04 A | 41 | 100% |  |  |  |  | 黄勇 | 8h | 8h | 4,500 | 4,500 |
| 43 | 1.1.2.2.18 | 住院身份登记 |  | 1d | 2017-02-06 A | 2017-02-06 A | 42 | 100% |  |  |  |  | 黄勇 | 8h | 8h | 4,500 | 4,500 |
| 44 | 1.1.2.3 | **管理功能开发** |  | 3d? | 2017-02-07 | 2017-02-09 |  |  |  | -17d | 0d |  |  | 24h |  | 13,500 |  |
| 45 | 1.1.2.3.1 | 钱箱管理 |  | 1d? | 2017-02-07 | 2017-02-07 | 43 |  |  | -17d | 0d |  | 黄勇 | 8h |  | 4,500 |  |
| 46 | 1.1.2.3.2 | 现金管理 |  | 1d | 2017-02-08 | 2017-02-08 | 45 |  |  | -17d | 0d |  | 黄勇 | 8h |  | 4,500 |  |
| 47 | 1.1.2.3.3 | 运营统计 |  | 1d | 2017-02-09 | 2017-02-09 | 46 |  |  | -17d | 0d |  | 黄勇 | 8h |  | 4,500 |  |
| 48 | 1.2 | **昆华自助机系统** |  | 64d? | 2017-01-16 A | 2017-04-05 | 2 | 10% | 57.35d? | 37d | 0d |  |  | 370h | 46h | 59,625 | 1,875 |
| 49 | 1.2.1 | **业务流程设计** |  | 12d? | 2017-03-06 A | 2017-03-17 |  | 24% | 9.18d? | 15d |  |  |  | 110h | 14h | 13,625 | 1,875 |
| 50 | 1.2.1.1 | **支付业务流程** |  | 12d? | 2017-03-06 | 2017-03-17 |  |  |  | 15d |  |  |  | 96h |  | 11,750 |  |
| 51 | 1.2.1.1.1 | 银行业务流程 |  | 10d? | 2017-03-06 | 2017-03-15 |  |  |  | 14d |  | start no earlier than 2017-03-06 | 张玉双 [40%]; 夏纬一 [20%]; 刘志强 [15%]; 黄勇 [15%] | 72h |  | 11,750 |  |
| 52 | 1.2.1.1.2 | 商户申请 |  | 3d? | 2017-03-15 | 2017-03-17 |  |  |  | 15d |  | finish no earlier than 2017-03-17 | 刘志强 | 24h |  |  |  |
| 53 | 1.2.1.2 | **HIS业务流程** |  | 4d? | 2017-03-09 A | 2017-03-12 A |  | 100% |  |  |  |  |  | 14h | 14h | 1,875 | 1,875 |
| 54 | 1.2.1.2.1 | 业务功能及接口梳理 |  | 3d? | 2017-03-09 A | 2017-03-11 A |  | 100% |  |  |  | start no earlier than 2017-03-09 | 张玉双 [75%]; 夏纬一 [25%] | 14h | 14h | 1,875 | 1,875 |
| 55 | 1.2.1.2.2 | 评审确认 |  | 1d? | 2017-03-12 A | 2017-03-12 A | 54 | 100% |  |  |  |  |  |  |  |  |  |
| 56 | 1.2.2 | **定制开发** |  | 64d? | 2017-01-16 A | 2017-04-05 |  | 7% | 59.35d? | 37d |  |  |  | 260h | 32h | 46,000 |  |
| 57 | 1.2.2.1 | **硬件调试** |  | 13d? | 2017-03-20 | 2017-04-05 |  |  |  | 0d |  |  | 樊扬 | 104h |  | 26,000 |  |
| 58 | 1.2.2.1.1 | 组件调试及封装 |  | 10d? | 2017-03-20 | 2017-03-30 |  |  |  | 0d |  | finish no earlier than 2017-03-30 |  |  |  |  |  |
| 59 | 1.2.2.1.2 | 整机调试 |  | 3d | 2017-03-31 | 2017-04-05 | 58 |  |  | 0d |  | finish no earlier than 2017-04-05 |  |  |  |  |  |
| 60 | 1.2.2.2 | **自助机功能** |  | 5d | 2017-03-13 | 2017-03-17 |  |  |  |  |  |  | 张玉双 [30%]; 夏纬一 | 52h |  | 12,500 |  |
| 61 | 1.2.2.2.1 | 办理就诊卡 |  | 1d | 2017-03-13 | 2017-03-13 |  |  |  | 56d |  | start no earlier than 2017-03-13 |  |  |  |  |  |
| 62 | 1.2.2.2.2 | 自助建档 |  | 1d? | 2017-03-13 | 2017-03-13 |  |  |  | 19d |  |  |  |  |  |  |  |
| 63 | 1.2.2.2.3 | 自助发卡 |  | 1d? | 2017-03-13 | 2017-03-13 |  |  |  | 19d |  |  |  |  |  |  |  |
| 64 | 1.2.2.2.4 | 就诊卡挂失 |  | 1d? | 2017-03-13 | 2017-03-13 |  |  |  | 19d |  |  |  |  |  |  |  |
| 65 | 1.2.2.2.5 | 预约医生 |  | 1d? | 2017-03-13 | 2017-03-13 |  |  |  | 19d |  |  |  |  |  |  |  |
| 66 | 1.2.2.2.6 | 预约签到 |  | 1d? | 2017-03-13 | 2017-03-13 |  |  |  | 19d |  |  |  |  |  |  |  |
| 67 | 1.2.2.2.7 | 预约查询 |  | 1d? | 2017-03-13 | 2017-03-13 |  |  |  | 19d |  |  |  |  |  |  |  |
| 68 | 1.2.2.2.8 | 就医指南查询 | inactive | 1d? | 2017-03-13 | 2017-03-13 |  |  |  | 19d |  |  |  |  |  |  |  |
| 69 | 1.2.2.2.9 | 现金预存 |  | 1d? | 2017-03-13 | 2017-03-13 |  |  |  | 19d |  |  |  |  |  |  |  |
| 70 | 1.2.2.2.10 | 银行卡预存 |  | 1d? | 2017-03-13 | 2017-03-13 |  |  |  | 19d |  |  |  |  |  |  |  |
| 71 | 1.2.2.2.11 | 微信预存 |  | 1d? | 2017-03-13 | 2017-03-13 |  |  |  | 19d |  |  |  |  |  |  |  |
| 72 | 1.2.2.2.12 | 支付宝预存 |  | 1d? | 2017-03-13 | 2017-03-13 |  |  |  | 19d |  |  |  |  |  |  |  |
| 73 | 1.2.2.2.13 | 预存查询 |  | 1d? | 2017-03-13 | 2017-03-13 |  |  |  | 19d |  |  |  |  |  |  |  |
| 74 | 1.2.2.2.14 | 预存退款 |  | 1d? | 2017-03-13 | 2017-03-13 |  |  |  | 19d |  |  |  |  |  |  |  |
| 75 | 1.2.2.2.15 | 缴费 |  | 1d? | 2017-03-13 | 2017-03-13 |  |  |  | 19d |  |  |  |  |  |  |  |
| 76 | 1.2.2.2.16 | 缴费查询 |  | 1d? | 2017-03-13 | 2017-03-13 |  |  |  | 19d |  |  |  |  |  |  |  |
| 77 | 1.2.2.2.17 | 门诊病历打印 |  | 1d? | 2017-03-13 | 2017-03-13 |  |  |  | 19d |  |  |  |  |  |  |  |
| 78 | 1.2.2.2.18 | 检查单查询 |  | 1d? | 2017-03-13 | 2017-03-13 |  |  |  | 19d |  |  |  |  |  |  |  |
| 79 | 1.2.2.2.19 | 住院预缴 |  | 1d? | 2017-03-13 | 2017-03-13 |  |  |  | 19d |  |  |  |  |  |  |  |
| 80 | 1.2.2.2.20 | 住院日清单 |  | 1d? | 2017-03-13 | 2017-03-13 |  |  |  | 19d |  |  |  |  |  |  |  |
| 81 | 1.2.2.2.21 | 住院费用查询 |  | 1d? | 2017-03-13 | 2017-03-13 |  |  |  | 19d |  |  |  |  |  |  |  |

| ID | WBS | Task | Type | Duration | Start | Finish | Predecessors | Complete | Remaining | Total slack | Free slack | Constraint | Resources | Work | Actual work | Cost |
| --- | --- | --- | --- | --- | --- | --- | --- | --- | --- | --- | --- | --- | --- | --- | --- | --- |
| 82 | 1.2.2.3 | **医院管理功能** |  | 3d | 2017-03-24 | 2017-03-26 |  |  |  |  |  |  | 夏纬一 | 24h |  | 7,500 |
| 83 | 1.2.2.3.1 | 用户管理 |  | 1d? | 2017-03-31 | 2017-03-31 |  |  |  | 39d |  | finish no earlier than 2017-03-31 |  |  |  |  |
| 84 | 1.2.2.3.2 | 组织机构管理 |  | 1d? | 2017-03-24 | 2017-03-24 |  |  |  | 8d |  |  |  |  |  |  |
| 85 | 1.2.2.3.3 | 权限管理 |  | 1d? | 2017-03-24 | 2017-03-24 |  |  |  | 8d |  |  |  |  |  |  |
| 86 | 1.2.2.3.4 | 银行管理 |  | 1d? | 2017-03-24 | 2017-03-24 |  |  |  | 8d |  |  |  |  |  |  |
| 87 | 1.2.2.3.5 | 自助机管理 |  | 1d? | 2017-03-24 | 2017-03-24 |  |  |  | 8d |  |  |  |  |  |  |
| 88 | 1.2.2.3.6 | 现金补录 |  | 1d? | 2017-03-24 | 2017-03-24 |  |  |  | 8d |  |  |  |  |  |  |
| 89 | 1.2.2.3.7 | 对账查询 |  | 1d? | 2017-03-24 | 2017-03-24 |  |  |  | 8d |  |  |  |  |  |  |
| 90 | 1.2.2.3.8 | 对账后处理 |  | 1d? | 2017-03-24 | 2017-03-24 |  |  |  | 8d |  |  |  |  |  |  |
| 91 | 1.2.2.4 | **银行管理功能** |  | 1d? | 2017-02-10 | 2017-02-10 |  |  |  | 46d |  |  |  |  |  |  |
| 92 | 1.2.2.4.1 | 现金管理 |  | 1d? | 2017-02-10 | 2017-02-10 |  |  |  | 46d |  |  |  |  |  |  |
| 93 | 1.2.2.5 | **后台功能** |  | 51d? | 2017-01-16 A | 2017-03-19 |  | 31% | 35.31d? | 13d |  |  |  | 80h | 32h |  |
| 94 | 1.2.2.5.1 | **支付结算** |  | 51d | 2017-01-16 A | 2017-03-19 |  | 40% | 30.6d | 13d |  |  |  | 80h | 32h |  |
| 95 | 1.2.2.5.1.1 | 银联支付 |  | 4d | 2017-01-16 A | 2017-01-19 A | 23 | 100% |  |  |  |  | 张玉双 | 32h | 32h |  |
| 96 | 1.2.2.5.1.2 | 闪付 | inactive | 1d | 2017-02-10 | 2017-02-10 | 95 |  |  | 44d | 0d |  |  |  |  |  |
| 97 | 1.2.2.5.1.3 | Apple pay | inactive | 2d | 2017-02-11 | 2017-02-13 | 96 |  |  | 44d |  |  |  |  |  |  |
| 98 | 1.2.2.5.1.4 | 支付宝支付 |  | 3d | 2017-03-14 | 2017-03-16 |  |  |  | 13d | 0d | finish no earlier than 2017-03-16 | 张玉双 | 24h |  |  |
| 99 | 1.2.2.5.1.5 | 微信支付 |  | 3d | 2017-03-17 | 2017-03-19 | 98 |  |  | 13d |  | finish no earlier than 2017-03-18 | 张玉双 | 24h |  |  |
| 100 | 1.2.2.5.2 | HIS接口调试 |  | 1d? | 2017-02-10 | 2017-02-10 |  |  |  | 46d |  |  |  |  |  |  |
| 101 | 1.2.2.5.3 | Socket缴费 |  | 1d? | 2017-02-10 | 2017-02-10 |  |  |  | 46d |  |  |  |  |  |  |
| 102 | 1.2.2.5.4 | 银行接口调试 |  | 1d? | 2017-02-10 | 2017-02-10 |  |  |  | 46d |  |  |  |  |  |  |
| 103 | 1.2.3 | 集成测试 |  | 5d | 2017-03-25 | 2017-03-30 |  |  |  | 3d |  | finish no earlier than 2017-03-30 |  |  |  |  |
| 104 | 1.3 | **SSM研发第二阶段** |  | 37d? | 2017-04-06 | 2017-05-22 | 48 |  |  | 0d |  |  |  | 592h |  | 259,000 |
| 105 | 1.3.1 | **开发** |  | 22d | 2017-04-06 | 2017-05-01 |  |  |  | 0d |  |  |  | 352h |  | 154,000 |
| 106 | 1.3.1.1 | **自助机业务开发** |  | 21d | 2017-04-06 | 2017-04-29 |  |  |  | 0d |  |  |  | 168h |  | 94,500 |
| 107 | 1.3.1.1.1 | 当日挂号 |  | 4d | 2017-04-06 | 2017-04-10 |  |  |  | 0d |  |  | 黄勇 | 32h |  | 18,000 |
| 108 | 1.3.1.1.2 | 挂号查询 |  | 2d | 2017-04-11 | 2017-04-12 | 107 |  |  | 0d |  |  | 黄勇 | 16h |  | 9,000 |
| 109 | 1.3.1.1.3 | 挂号检查 |  | 2d | 2017-04-13 | 2017-04-14 | 108 |  |  | 0d |  |  | 黄勇 | 16h |  | 9,000 |
| 110 | 1.3.1.1.4 | 食堂费用查询 |  | 2d | 2017-04-15 | 2017-04-17 | 109 |  |  | 0d |  |  | 黄勇 | 16h |  | 9,000 |
| 111 | 1.3.1.1.5 | 院内导航 |  | 6d | 2017-04-18 | 2017-04-24 | 110 |  |  | 0d |  |  | 黄勇 | 48h |  | 27,000 |
| 112 | 1.3.1.1.6 | 满意度调查 |  | 5d | 2017-04-25 | 2017-04-29 | 111 |  |  | 0d |  |  | 黄勇 | 40h |  | 22,500 |

| ID | WBS | Task | Duration | Start | Finish | Predecessors | Total slack | Resources | Work | Cost |
| --- | --- | --- | --- | --- | --- | --- | --- | --- | --- | --- |
| 113 | 1.3.1.2 | **管理功能开发** | 22d | 2017-04-06 | 2017-05-01 |  | 0d |  | 184h | 59,500 |
| 114 | 1.3.1.2.1 | 机构管理 | 4d | 2017-04-06 | 2017-04-10 |  | 0d | 夏纬一 | 32h | 10,000 |
| 115 | 1.3.1.2.2 | 功能管理 | 4d | 2017-04-11 | 2017-04-14 | 114 | 0d | 夏纬一 | 32h | 10,000 |
| 116 | 1.3.1.2.3 | 权限管理 | 3d | 2017-04-15 | 2017-04-18 | 115 | 0d | 夏纬一 | 24h | 7,500 |
| 117 | 1.3.1.2.4 | 自助机布放区域管理 | 2d | 2017-04-19 | 2017-04-20 | 116 | 0d | 夏纬一 | 16h | 5,000 |
| 118 | 1.3.1.2.5 | 自助机管理 | 2d | 2017-04-21 | 2017-04-22 | 117 | 0d | 夏纬一 | 16h | 5,000 |
| 119 | 1.3.1.2.6 | 运行监控 | 5d | 2017-04-24 | 2017-04-28 | 118 | 0d | 夏纬一 | 40h | 12,500 |
| 120 | 1.3.1.2.7 | 日志管理 | 2d | 2017-04-29 | 2017-05-01 | 119 | 0d | 夏纬一 | 16h | 5,000 |
| 121 | 1.3.1.2.8 | 系统日志查询 | 1d | 2017-05-01 | 2017-05-01 | 112 | 0d | 黄勇 | 8h | 4,500 |
| 122 | 1.3.2 | **整体测试** | 5d | 2017-05-02 | 2017-05-08 | 105 | 0d |  | 80h | 35,000 |
| 123 | 1.3.2.1 | 集成测试 | 3d | 2017-05-02 | 2017-05-04 |  | 0d | 黄勇; 夏纬一 | 48h | 21,000 |
| 124 | 1.3.2.2 | 性能测试 | 2d | 2017-05-05 | 2017-05-08 | 123 | 0d | 黄勇; 夏纬一 | 32h | 14,000 |
| 125 | 1.3.3 | **文档整理** | 10d? | 2017-05-09 | 2017-05-22 | 122 | 0d |  | 160h | 70,000 |
| 126 | 1.3.3.1 | 编写产品白皮书 | 2d | 2017-05-09 | 2017-05-10 |  | 0d | 黄勇 | 16h | 9,000 |
| 127 | 1.3.3.2 | 编写解决方案PPT | 3d | 2017-05-11 | 2017-05-15 | 126 | 0d | 黄勇 | 24h | 13,500 |
| 128 | 1.3.3.3 | 编写产品报价文件 | 1d? | 2017-05-16 | 2017-05-16 | 127 | 0d | 黄勇 | 8h | 4,500 |
| 129 | 1.3.3.4 | 编写需求调研指引 | 2d | 2017-05-17 | 2017-05-18 | 128 | 0d | 黄勇 | 16h | 9,000 |
| 130 | 1.3.3.5 | 编写接口需求规格说明书 | 2d | 2017-05-19 | 2017-05-22 | 129 | 0d | 黄勇 | 16h | 9,000 |
| 131 | 1.3.3.6 | 编写实施手册 | 5d | 2017-05-09 | 2017-05-15 |  | 0d | 夏纬一 | 40h | 12,500 |
| 132 | 1.3.3.7 | 编写运行维护手册 | 5d | 2017-05-16 | 2017-05-22 | 131 | 0d | 夏纬一 | 40h | 12,500 |
