# 02_项目工程表_new

Schedule from MS Project, 2010-01-07 to 2010-05-04.
微软中国

## Calendars

- 标准: Mon-Fri 08:00-12:00, 13:00-17:00; Sat-Sun off.

## Resources

| Resource |
| --- |
| 徐函 |
| 焦光瑜 |
| 刘鹤飞 |
| 赫宾 |
| 赵明兰 |
| PJL |
| Member |
| 测试人员 |
| 技术联络人员 |
| 项目经理 |
| 部署小组 |
| A |

## Schedule

| ID | WBS | Task | Type | Duration | Start | Finish | Predecessors | Total slack | Free slack | Resources | Work | Text1 |
| --- | --- | --- | --- | --- | --- | --- | --- | --- | --- | --- | --- | --- |
| 1 | 1 | **门户网站项目** |  | 84d? | 2010-01-07 | 2010-05-04 |  | 0d |  |  | 5536h |  |
| 2 | 1.1 | **项目启动** |  | 11d | 2010-01-07 | 2010-01-21 |  | 73d |  | A | 176h |  |
| 3 | 1.1.1 | 编写《VIP客户联系函》《项目预算明细》《整体时间计划》 |  | 2d | 2010-01-07 | 2010-01-08 |  | 73d | 0d | A | 16h | VIP客户联系函,项目预算明细,整体时间计划 |
| 4 | 1.1.2 | 内部评审、根据反馈修改修正、评审人员确认 |  | 1d | 2010-01-11 | 2010-01-11 | 3 | 73d | 0d | A | 8h |  |
| 5 | 1.1.3 | 客户评审 |  | 1d | 2010-01-12 | 2010-01-12 | 4 | 73d | 0d | A | 8h |  |
| 6 | 1.1.4 | 根据反馈修改修正、客户确认 |  | 1d | 2010-01-13 | 2010-01-13 | 5 | 73d | 0d | A | 8h | 会议记录 |
| 7 | 1.1.5 | 客户签字 |  | 1d | 2010-01-14 | 2010-01-14 | 6 | 73d | 0d | A | 8h |  |
| 8 | 1.1.6 | 编写《立项申请书》 |  | 1d | 2010-01-15 | 2010-01-15 | 7 | 73d | 0d | A | 8h |  |
| 9 | 1.1.7 | 《立项申请书》评审 |  | 1d | 2010-01-18 | 2010-01-18 | 8 | 73d | 0d | A | 8h |  |
| 10 | 1.1.8 | 《立项申请书》修正、确认 |  | 1d | 2010-01-19 | 2010-01-19 | 9 | 73d | 0d | A | 8h |  |
| 11 | 1.1.9 | 《立项申请书》签字 |  | 1d | 2010-01-20 | 2010-01-20 | 10 | 73d | 0d | A | 8h |  |
| 12 | 1.1.10 | 召开项目启动会议 |  | 1d | 2010-01-21 | 2010-01-21 | 11 | 73d | 0d | A | 8h | 会议记录 |
| 13 | 1.1.11 | 项目启动结束 | milestone | 0d | 2010-01-21 | 2010-01-21 | 12 | 73d |  | A |  | 项目估价书(V1.0) |
| 14 | 1.2 | **分析/软件需求** |  | 29d | 2010-01-07 | 2010-02-16 |  | 0d |  | A | 576h |  |
| 15 | 1.2.1 | 系统需求获取 |  | 5d | 2010-01-07 | 2010-01-13 |  | 0d |  | A | 40h | 需求调查表 |
| 16 | 1.2.2 | 系统需求讨论 |  | 2d | 2010-01-14 | 2010-01-15 | 15 | 0d |  | A | 16h | 会议记录 |
| 17 | 1.2.3 | 需求分析 |  | 5d | 2010-01-18 | 2010-01-22 | 16 | 0d |  | A | 40h | 技术调查报告 |
| 18 | 1.2.4 | 编写《项目方案设计书》《系统需求规格说明书》 |  | 3d | 2010-01-25 | 2010-01-27 | 17 | 0d |  | A | 24h | 项目方案设计书,系统需求规格说明书 |
| 19 | 1.2.5 | **需求分析确认过程** |  | 14d | 2010-01-28 | 2010-02-16 | 18 | 0d |  | A | 224h |  |
| 20 | 1.2.5.1 | 《项目方案设计书》《系统需求规格说明书》意见采集 |  | 2d | 2010-01-28 | 2010-01-29 |  | 0d |  | A | 16h | 会议记录,WT Record |
| 21 | 1.2.5.2 | 《项目方案设计书》《系统需求规格说明书》修改 |  | 5d | 2010-02-01 | 2010-02-05 | 20 | 0d |  | A | 40h | WT Record |
| 22 | 1.2.5.3 | 《项目方案设计书》《系统需求规格说明书》第二次意见采集 |  | 3d | 2010-02-08 | 2010-02-10 | 21 | 0d |  | A | 24h | 会议记录,WT Record |
| 23 | 1.2.5.4 | 《项目方案设计书》《系统需求规格说明书》第二次修改 |  | 2d | 2010-02-11 | 2010-02-12 | 22 | 0d |  | A | 16h | WT Record |
| 24 | 1.2.5.5 | 《项目方案设计书》《系统需求规格说明书》确认 |  | 2d | 2010-02-15 | 2010-02-16 | 23 | 0d |  | A | 16h | 会议记录,WT Record |
| 25 | 1.2.5.6 | 需求分析确认过程结束 | milestone | 0d | 2010-02-16 | 2010-02-16 | 24 | 0d |  | A |  | 项目方案设计书(V1.0) |
| 26 | 1.2.6 | 需求分析阶段结束 | milestone | 0d | 2010-02-16 | 2010-02-16 | 25 | 0d |  | A |  | 项目里程碑总结报告,会议记录 |

| ID | WBS | Task | Type | Duration | Start | Finish | Predecessors | Total slack | Resources | Work | Text1 |
| --- | --- | --- | --- | --- | --- | --- | --- | --- | --- | --- | --- |
| 27 | 1.3 | **原型开发** |  | 41d | 2010-02-17 | 2010-04-14 | 26 | 0d | A | 784h |  |
| 28 | 1.3.1 | 原型设计 |  | 10d | 2010-02-17 | 2010-03-02 |  | 0d | A | 80h | 技术调查报告 |
| 29 | 1.3.2 | 原型开发 |  | 15d | 2010-03-03 | 2010-03-23 | 28 | 0d | A | 120h | 界面原型 |
| 30 | 1.3.3 | **原型确认过程** |  | 16d | 2010-03-24 | 2010-04-14 | 29 | 0d | A | 256h |  |
| 31 | 1.3.3.1 | 原型意见采集 |  | 2d | 2010-03-24 | 2010-03-25 |  | 0d | A | 16h | 会议记录,CR Record |
| 32 | 1.3.3.2 | 原型修改 |  | 4d | 2010-03-26 | 2010-03-31 | 31 | 0d | A | 32h | CR Record |
| 33 | 1.3.3.3 | 原型第二次意见采集 |  | 2d | 2010-04-01 | 2010-04-02 | 32 | 0d | A | 16h | 会议记录,CR Record |
| 34 | 1.3.3.4 | 原型第二次修改 |  | 6d | 2010-04-05 | 2010-04-12 | 33 | 0d | A | 48h | CR Record |
| 35 | 1.3.3.5 | 原型确认 |  | 1d | 2010-04-13 | 2010-04-13 | 34 | 0d | A | 8h | 会议记录,CR Record |
| 36 | 1.3.3.6 | 原型确认过程结束 |  | 1d | 2010-04-14 | 2010-04-14 | 35 | 0d | A | 8h |  |
| 37 | 1.3.4 | 原型开发阶段结束 | milestone | 0d | 2010-04-14 | 2010-04-14 | 36 | 0d | A |  | 项目阶段汇报表 |
| 38 | 1.4 | **设计** |  | 14d | 2010-04-15 | 2010-05-04 | 37 | 0d | A | 536h |  |
| 39 | 1.4.1 | **系统设计** |  | 9d | 2010-04-15 | 2010-04-27 |  | 0d | A | 144h |  |
| 40 | 1.4.1.1 | 系统设计 |  | 1d | 2010-04-15 | 2010-04-15 |  | 0d | A | 8h | 技术调查报告 |
| 41 | 1.4.1.2 | 编写《系统设计说明书》 |  | 5d | 2010-04-16 | 2010-04-22 | 40 | 0d | A | 40h | 系统设计说明书 |
| 42 | 1.4.1.3 | 设计评审 |  | 1d | 2010-04-23 | 2010-04-23 | 41 | 0d | A | 8h | 会议记录,WT Record |
| 43 | 1.4.1.4 | 设计修改 |  | 1d | 2010-04-26 | 2010-04-26 | 42 | 0d | A | 8h | WT Record |
| 44 | 1.4.1.5 | 设计确认 |  | 1d | 2010-04-27 | 2010-04-27 | 43 | 0d | A | 8h | 会议记录,WT Record |
| 45 | 1.4.1.6 | 系统设计结束 | milestone | 0d | 2010-04-27 | 2010-04-27 | 44 | 0d | A |  | 系统设计说明书(V1.0) |
| 46 | 1.4.2 | **详细设计** |  | 5d | 2010-04-27 | 2010-05-04 | 44 | 0d | A | 280h |  |
| 47 | 1.4.2.1 | **模块一** |  | 5d | 2010-04-28 | 2010-05-04 |  | 0d | A | 80h |  |
| 48 | 1.4.2.1.1 | 详细设计 |  | 1d | 2010-04-28 | 2010-04-28 | 45 | 0d | A | 8h |  |
| 49 | 1.4.2.1.2 | 编写《详细设计说明书》 |  | 1d | 2010-04-29 | 2010-04-29 | 48 | 0d | A | 8h | 详细设计说明书_模块一 |
| 50 | 1.4.2.1.3 | 设计评审 |  | 1d | 2010-04-30 | 2010-04-30 | 49 | 0d | A | 8h | 会议记录,WT Record |
| 51 | 1.4.2.1.4 | 设计修改 |  | 1d | 2010-05-03 | 2010-05-03 | 50 | 0d | A | 8h | WT Record |
| 52 | 1.4.2.1.5 | 设计确认 |  | 1d | 2010-05-04 | 2010-05-04 | 51 | 0d | A | 8h | 会议记录,WT Record |

| ID | WBS | Task | Type | Duration | Start | Finish | Predecessors | Total slack | Free slack | Resources | Work | Text1 |
| --- | --- | --- | --- | --- | --- | --- | --- | --- | --- | --- | --- | --- |
| 53 | 1.4.2.2 | **模块二** |  | 5d | 2010-04-28 | 2010-05-04 |  | 0d |  | A | 80h |  |
| 54 | 1.4.2.2.1 | 详细设计 |  | 1d | 2010-04-28 | 2010-04-28 |  | 0d |  | A | 8h |  |
| 55 | 1.4.2.2.2 | 编写《详细设计说明书》 |  | 1d | 2010-04-29 | 2010-04-29 | 54 | 0d |  | A | 8h | 详细设计说明书_模块二 |
| 56 | 1.4.2.2.3 | 设计评审 |  | 1d | 2010-04-30 | 2010-04-30 | 55 | 0d |  | A | 8h | 会议记录,WT Record |
| 57 | 1.4.2.2.4 | 设计修改 |  | 1d | 2010-05-03 | 2010-05-03 | 56 | 0d |  | A | 8h | WT Record |
| 58 | 1.4.2.2.5 | 设计确认 |  | 1d | 2010-05-04 | 2010-05-04 | 57 | 0d |  | A | 8h | 会议记录,WT Record |
| 59 | 1.4.2.3 | **模块N** |  | 5d | 2010-04-28 | 2010-05-04 |  | 0d |  | A | 80h |  |
| 60 | 1.4.2.3.1 | 详细设计 |  | 1d | 2010-04-28 | 2010-04-28 |  | 0d |  | A | 8h |  |
| 61 | 1.4.2.3.2 | 编写《详细设计说明书》 |  | 1d | 2010-04-29 | 2010-04-29 | 60 | 0d |  | A | 8h | 详细设计说明书_模块N |
| 62 | 1.4.2.3.3 | 设计评审 |  | 1d | 2010-04-30 | 2010-04-30 | 61 | 0d |  | A | 8h | 会议记录,WT Record |
| 63 | 1.4.2.3.4 | 设计修改 |  | 1d | 2010-05-03 | 2010-05-03 | 62 | 0d |  | A | 8h | WT Record |
| 64 | 1.4.2.3.5 | 设计确认 |  | 1d | 2010-05-04 | 2010-05-04 | 63 | 0d |  | A | 8h | 会议记录,WT Record |
| 65 | 1.4.2.4 | 详细设计结束 | milestone | 0d | 2010-04-27 | 2010-04-27 |  | 5d |  | A |  |  |
| 66 | 1.5 | **编码** |  | 13d? | 2010-01-07 | 2010-01-25 |  | 34d |  | A | 552h |  |
| 67 | 1.5.1 | 编码规范确认 |  | 3d | 2010-01-07 | 2010-01-11 |  | 81d |  | A | 24h |  |
| 68 | 1.5.2 | **功能模块制造** |  | 10d | 2010-01-07 | 2010-01-20 |  | 34d |  | A | 400h |  |
| 69 | 1.5.2.1 | 模块1编写 |  | 10d | 2010-01-07 | 2010-01-20 |  | 34d | 0d | A | 80h |  |
| 70 | 1.5.2.2 | 模块2编写 |  | 10d | 2010-01-07 | 2010-01-20 |  | 34d | 0d | A | 80h |  |
| 71 | 1.5.2.3 | 模块3编写 |  | 10d | 2010-01-07 | 2010-01-20 |  | 34d | 0d | A | 80h |  |
| 72 | 1.5.2.4 | 模块4编写 |  | 10d | 2010-01-07 | 2010-01-20 |  | 34d | 0d | A | 80h |  |
| 73 | 1.5.3 | **接口制造** |  | 1d? | 2010-01-07 | 2010-01-07 |  | 83d |  |  |  |  |
| 74 | 1.5.3.1 | 接口1编写 |  | 1d? | 2010-01-07 | 2010-01-07 |  | 83d |  |  |  |  |
| 75 | 1.5.3.2 | 接口2编写 |  | 1d? | 2010-01-07 | 2010-01-07 |  | 83d |  |  |  |  |
| 76 | 1.5.3.3 | 接口3编写 |  | 1d? | 2010-01-07 | 2010-01-07 |  | 83d |  |  |  |  |
| 77 | 1.5.4 | 代码评审 |  | 1d | 2010-01-21 | 2010-01-21 | 72 | 71d | 0d | A | 8h | CR Record |
| 78 | 1.5.5 | 代码修改 |  | 1d | 2010-01-22 | 2010-01-22 | 77 | 71d | 0d | A | 8h |  |
| 79 | 1.5.6 | 代码确认 |  | 1d | 2010-01-25 | 2010-01-25 | 78 | 71d |  | A | 8h | CR Record |
| 80 | 1.5.7 | 系统编码阶段结束 | milestone | 0d | 2010-01-20 | 2010-01-20 | 69, 70, 71, 72 | 34d | 0d | A |  | 代码_V0.5 |

| ID | WBS | Task | Type | Duration | Start | Finish | Predecessors | Total slack | Free slack | Resources | Work | Text1 |
| --- | --- | --- | --- | --- | --- | --- | --- | --- | --- | --- | --- | --- |
| 81 | 1.6 | **测试** |  | 40d | 2010-01-21 | 2010-03-17 | 80 | 34d |  | A | 1368h |  |
| 82 | 1.6.1 | 制定测试计划 |  | 1d | 2010-01-21 | 2010-01-21 |  | 34d | 0d | A | 8h | 测试方案 |
| 83 | 1.6.2 | **单元测试** |  | 13d | 2010-01-22 | 2010-02-09 |  | 34d |  | A | 208h |  |
| 84 | 1.6.2.1 | 制作单元测试书 |  | 5d | 2010-01-22 | 2010-01-28 | 82 | 34d | 0d | A | 40h | 单元测试用例 |
| 85 | 1.6.2.2 | 测试 |  | 2d | 2010-01-29 | 2010-02-01 | 84 | 34d | 0d | A | 16h | BugList，测试成绩书 |
| 86 | 1.6.2.3 | bug修正 |  | 3d | 2010-02-02 | 2010-02-04 | 85 | 34d | 0d | A | 24h | BugList |
| 87 | 1.6.2.4 | 确认修正结果 |  | 3d | 2010-02-05 | 2010-02-09 | 86 | 34d | 0d | A | 24h | BugList，测试成绩书 |
| 88 | 1.6.2.5 | 完成单元测试 | milestone | 0d | 2010-02-09 | 2010-02-09 | 87 | 34d | 0d | A |  |  |
| 89 | 1.6.3 | **集成测试** |  | 13d | 2010-02-10 | 2010-02-26 | 88 | 34d |  | A | 208h |  |
| 90 | 1.6.3.1 | 制作集成测试书 |  | 5d | 2010-02-10 | 2010-02-16 |  | 34d | 0d | A | 40h | 集成测试用例 |
| 91 | 1.6.3.2 | 测试 |  | 2d | 2010-02-17 | 2010-02-18 | 90 | 34d | 0d | A | 16h | BugList，测试成绩书 |
| 92 | 1.6.3.3 | bug修正 |  | 3d | 2010-02-19 | 2010-02-23 | 91 | 34d | 0d | A | 24h | BugList |
| 93 | 1.6.3.4 | 确认修正结果 |  | 3d | 2010-02-24 | 2010-02-26 | 92 | 34d | 0d | A | 24h | BugList，测试成绩书 |
| 94 | 1.6.3.5 | 完成集成测试 | milestone | 0d | 2010-02-26 | 2010-02-26 | 93 | 34d | 0d | A |  | 集成测试报告书 |
| 95 | 1.6.4 | **性能测试** |  | 13d | 2010-03-01 | 2010-03-17 | 94 | 34d |  | A | 208h |  |
| 96 | 1.6.4.1 | 制作性能测试书 |  | 5d | 2010-03-01 | 2010-03-05 |  | 34d | 0d | A | 40h | 性能测试方案、脚本、数据 |
| 97 | 1.6.4.2 | 测试 |  | 2d | 2010-03-08 | 2010-03-09 | 96 | 34d | 0d | A | 16h |  |
| 98 | 1.6.4.3 | bug修正 |  | 3d | 2010-03-10 | 2010-03-12 | 97 | 34d | 0d | A | 24h |  |
| 99 | 1.6.4.4 | 确认修正结果 |  | 3d | 2010-03-15 | 2010-03-17 | 98 | 34d | 0d | A | 24h |  |
| 100 | 1.6.4.5 | 完成性能测试 | milestone | 0d | 2010-03-17 | 2010-03-17 | 99 | 34d |  | A |  | 性能测试报告书 |
| 101 | 1.6.5 | **联调测试** |  | 13d | 2010-01-21 | 2010-02-08 |  | 61d |  | A | 208h |  |
| 102 | 1.6.5.1 | 制作联调测试书 |  | 5d | 2010-01-21 | 2010-01-27 |  | 61d | 0d | A | 40h | 联调测试方案 |
| 103 | 1.6.5.2 | 测试 |  | 2d | 2010-01-28 | 2010-01-29 | 102 | 61d | 0d | A | 16h |  |
| 104 | 1.6.5.3 | bug修正 |  | 3d | 2010-02-01 | 2010-02-03 | 103 | 61d | 0d | A | 24h |  |
| 105 | 1.6.5.4 | 确认修正结果 |  | 3d | 2010-02-04 | 2010-02-08 | 104 | 61d | 0d | A | 24h |  |
| 106 | 1.6.5.5 | 完成联调测试 | milestone | 0d | 2010-02-08 | 2010-02-08 | 105 | 61d |  | A |  | 联调测试报告书 |

| ID | WBS | Task | Type | Duration | Start | Finish | Predecessors | Total slack | Free slack | Resources | Work | Text1 |
| --- | --- | --- | --- | --- | --- | --- | --- | --- | --- | --- | --- | --- |
| 107 | 1.6.6 | **用户测试** |  | 13d | 2010-01-21 | 2010-02-08 |  | 61d |  | A | 208h |  |
| 108 | 1.6.6.1 | 制作用户测试书 |  | 5d | 2010-01-21 | 2010-01-27 |  | 61d | 0d | A | 40h | 联调测试方案、测试用例 |
| 109 | 1.6.6.2 | 测试 |  | 2d | 2010-01-28 | 2010-01-29 | 108 | 61d | 0d | A | 16h | BugList，测试成绩书 |
| 110 | 1.6.6.3 | bug修正 |  | 3d | 2010-02-01 | 2010-02-03 | 109 | 61d | 0d | A | 24h | BugList |
| 111 | 1.6.6.4 | 确认修正结果 |  | 3d | 2010-02-04 | 2010-02-08 | 110 | 61d | 0d | A | 24h | BugList，测试成绩书 |
| 112 | 1.6.6.5 | 完成用户测试 | milestone | 0d | 2010-02-08 | 2010-02-08 | 111 | 61d |  | A |  | 用户测试报告 |
| 113 | 1.7 | **文档** |  | 21d | 2010-01-07 | 2010-02-04 |  | 63d |  | A | 1176h |  |
| 114 | 1.7.1 | **帮助文档** |  | 21d | 2010-01-07 | 2010-02-04 |  | 63d |  | A | 336h |  |
| 115 | 1.7.1.1 | 制定“帮助”规范 |  | 1d | 2010-01-07 | 2010-01-07 |  | 63d | 0d | A | 8h |  |
| 116 | 1.7.1.2 | 开发“帮助”系统 |  | 3w | 2010-01-08 | 2010-01-28 | 115 | 63d | 0d | A | 120h | 帮助文档 |
| 117 | 1.7.1.3 | 审阅“帮助”文档 |  | 3d | 2010-01-29 | 2010-02-02 | 116 | 63d | 0d | A | 24h | WT Record |
| 118 | 1.7.1.4 | 根据反馈修改“帮助”文档 |  | 2d | 2010-02-03 | 2010-02-04 | 117 | 63d | 0d | A | 16h | 帮助文档,WT Record |
| 119 | 1.7.2 | **用户手册** |  | 21d | 2010-01-07 | 2010-02-04 |  | 63d |  | A | 336h |  |
| 120 | 1.7.2.1 | 制定用户手册规范 |  | 2d | 2010-01-07 | 2010-01-08 |  | 63d | 0d | A | 16h |  |
| 121 | 1.7.2.2 | 编写用户手册 |  | 3w | 2010-01-11 | 2010-01-29 | 120 | 63d | 0d | A | 120h | 用户手册 |
| 122 | 1.7.2.3 | 审阅所有的用户文档 |  | 2d | 2010-02-01 | 2010-02-02 | 121 | 63d | 0d | A | 16h | WT Record |
| 123 | 1.7.2.4 | 根据反馈修改用户文档 |  | 2d | 2010-02-03 | 2010-02-04 | 122 | 63d | 0d | A | 16h | 用户手册,WT Record |
| 124 | 1.7.3 | **技术调查文档** |  | 21d | 2010-01-07 | 2010-02-04 |  | 63d |  | A | 336h |  |
| 125 | 1.7.3.1 | 制定技术调查文档规范 |  | 2d | 2010-01-07 | 2010-01-08 |  | 63d | 0d | A | 16h |  |
| 126 | 1.7.3.2 | 编写技术调查 |  | 3w | 2010-01-11 | 2010-01-29 | 125 | 63d | 0d | A | 120h |  |
| 127 | 1.7.3.3 | 审阅所有的技术调查文档 |  | 2d | 2010-02-01 | 2010-02-02 | 126 | 63d | 0d | A | 16h |  |
| 128 | 1.7.3.4 | 根据反馈修改技术调查文档 |  | 2d | 2010-02-03 | 2010-02-04 | 127 | 63d |  | A | 16h |  |
| 129 | 1.7.4 | 完成文档 | milestone | 0d | 2010-02-04 | 2010-02-04 | 118, 123 | 63d |  | A |  |  |
| 130 | 1.8 | **用户培训** |  | 1d? | 2010-01-07 | 2010-01-07 |  | 83d |  |  |  |  |
| 131 | 1.8.1 | 确定培训群体 |  | 1d? | 2010-01-07 | 2010-01-07 |  | 83d |  |  |  | 培训方案 |
| 132 | 1.8.2 | 确定培训方案 |  | 1d? | 2010-01-07 | 2010-01-07 |  | 83d |  |  |  | 培训讲义 |
| 133 | 1.8.3 | 培训实施 |  | 1d? | 2010-01-07 | 2010-01-07 |  | 83d |  |  |  | 签到表 |
| 134 | 1.8.4 | 反馈、总结 |  | 1d? | 2010-01-07 | 2010-01-07 |  | 83d |  |  |  | 总结报告 |

| ID | WBS | Task | Type | Duration | Start | Finish | Predecessors | Total slack | Free slack | Resources | Work | Text1 |
| --- | --- | --- | --- | --- | --- | --- | --- | --- | --- | --- | --- | --- |
| 135 | 1.9 | **试生产** |  | 9d | 2010-01-07 | 2010-01-19 |  | 75d |  | A | 144h |  |
| 136 | 1.9.1 | 确定测试群体 |  | 1d | 2010-01-07 | 2010-01-07 |  | 75d | 0d | A | 8h | 试运行方案 |
| 137 | 1.9.2 | 确定软件分发机制 |  | 1d | 2010-01-08 | 2010-01-08 | 136 | 75d | 0d | A | 8h |  |
| 138 | 1.9.3 | 安装/部署软件 |  | 1d | 2010-01-11 | 2010-01-11 | 137 | 75d | 0d | A | 8h |  |
| 139 | 1.9.4 | 获得用户反馈 |  | 1w | 2010-01-12 | 2010-01-18 | 138 | 75d | 0d | A | 40h | 上线跟踪单 |
| 140 | 1.9.5 | 评估测试信息 |  | 1d | 2010-01-19 | 2010-01-19 | 139 | 75d | 0d | A | 8h | 系统试运行报告 |
| 141 | 1.9.6 | 完成试生产工作 | milestone | 0d | 2010-01-19 | 2010-01-19 | 140 | 75d |  | A |  |  |
| 142 | 1.10 | **上线** |  | 7d | 2010-01-07 | 2010-01-15 |  | 73d |  | A | 112h |  |
| 143 | 1.10.1 | 确定最终上线策略 |  | 1d | 2010-01-07 | 2010-01-07 |  | 73d | 0d | A | 8h |  |
| 144 | 1.10.2 | 确定上线方法 |  | 1d | 2010-01-08 | 2010-01-08 | 143 | 73d | 0d | A | 8h |  |
| 145 | 1.10.3 | 获得上线所需资源（软件、基础设施、数据、协助人员） |  | 1d | 2010-01-11 | 2010-01-11 | 144 | 73d | 0d | A | 8h |  |
| 146 | 1.10.4 | 编写上线方案、运维文档 |  | 1d | 2010-01-12 | 2010-01-12 | 145 | 73d | 0d | A | 8h | 上线方案,运行维护手册,应急预案,全量安装手册,生产环境配置清单 |
| 147 | 1.10.5 | 上线会议 |  | 1d | 2010-01-13 | 2010-01-13 | 146 | 73d | 0d | A | 8h | 会议记录,上线确认单 |
| 148 | 1.10.6 | 上线实施 |  | 1d | 2010-01-14 | 2010-01-14 | 147 | 73d | 0d | A | 8h |  |
| 149 | 1.10.7 | 验证测试 |  | 1d | 2010-01-15 | 2010-01-15 | 148 | 73d | 0d | A | 8h |  |
| 150 | 1.10.8 | 完成上线工作 | milestone | 0d | 2010-01-15 | 2010-01-15 | 149 | 73d | 0d | A |  | 上线总结报告 |
| 151 | 1.11 | **验收转运维** |  | 4d | 2010-01-18 | 2010-01-21 |  | 73d |  | A | 64h |  |
| 152 | 1.11.1 | 确定维护计划、交接运维材料 |  | 1d | 2010-01-18 | 2010-01-18 | 150 | 73d | 0d | A | 8h |  |
| 153 | 1.11.2 | 建立维护小组、明确职责 |  | 1d | 2010-01-19 | 2010-01-19 | 152 | 73d | 0d | A | 8h |  |
| 154 | 1.11.3 | 编写《项目验收确认单》 |  | 1d | 2010-01-20 | 2010-01-20 | 153 | 73d | 0d | A | 8h | 项目验收确认单 |
| 155 | 1.11.4 | 评审、签字 |  | 1d | 2010-01-21 | 2010-01-21 | 154 | 73d | 0d | A | 8h |  |
| 156 | 1.11.5 | 完成转运维 | milestone | 0d | 2010-01-21 | 2010-01-21 | 155 | 73d |  | A |  |  |
| 157 | 1.12 | **项目结束** |  | 1d | 2010-01-07 | 2010-01-07 |  | 83d |  | A | 48h |  |
| 158 | 1.12.1 | 过程文档全部存档（纸质，电子） |  | 1d | 2010-01-07 | 2010-01-07 |  | 83d |  | A | 8h |  |
| 159 | 1.12.2 | 总结经验教训记录存档 |  | 1d | 2010-01-07 | 2010-01-07 |  | 83d |  | A | 8h |  |
| 160 | 1.12.3 | 分发给工作组成员 |  | 1d | 2010-01-07 | 2010-01-07 |  | 83d |  | A | 8h |  |
| 161 | 1.12.4 | 编写《项目总结报告》 |  | 1d | 2010-01-07 | 2010-01-07 |  | 83d |  | A | 8h | 项目总结报告 |
| 162 | 1.12.5 | 进行客户满意度调查 |  | 1d | 2010-01-07 | 2010-01-07 |  | 83d |  | A | 8h | 客户满意度调查表 |
